# QT01_13071_QLNS

Schedule from MS Project, 2010-01-04 to 2013-08-29, A marks actual dates.

## Calendars

- Standard: Mon-Fri 08:00-12:00, 13:00-17:00; Sat-Sun off. Exceptions (off unless hours are given): 2010-04-23, 2010-04-30, 2010-09-02, 2010-12-22.

## Resources

| Resource | Notes |
| --- | --- |
| QTDA |  |
| TNGP | Trưởng nhóm giải pháp |
| CBGP | Cán bộ giải pháp |
| TNPT | Trưởng nhóm phát triển |
| CBPT | Cán bộ phát triển |
| TNKT | Trưởng nhóm kiểm thử |
| SQA |  |
| CBKT | Cán bộ kiểm thử |
| đội dự án |  |
| KH |  |
| Trưởng BU |  |
| QLCH |  |
| Trưởng phòng |  |
| CBGT |  |
| Trưởng/phó BU/Trưởng phòng |  |
| đội dự án (người do QTDA đề xuất xem xét) |  |
| CBTK |  |
| Trưởng phòng/ Trưởng/phó BU |  |
| CBPT1 |  |
| CBPT2 |  |
| TKKT |  |
| 12 |  |
| TienCX |  |
| DucPA |  |
| DoanPV |  |
| DoanhPV |  |
| QuanPM |  |
| QuyenNT11 |  |
| ThanhNX4 |  |
| YenNH1 |  |
| ThanhNX14 |  |
| YenNTH8 |  |
| DungVV8 |  |

## Schedule

| ID | WBS | Task | Type | Duration | Start | Finish | Predecessors | Complete | Remaining | Baseline start | Baseline finish | Baseline duration | Total slack | Free slack | Constraint | Resources | Work | Actual work | Text1 |
| --- | --- | --- | --- | --- | --- | --- | --- | --- | --- | --- | --- | --- | --- | --- | --- | --- | --- | --- | --- |
| 1 | 1 | **Tiền khởi động** |  | 1.25d | 2013-07-29 08:00 A | 2013-07-30 10:00 |  | 25% | 0.94d | 2013-07-29 08:00 | 2013-07-31 17:30 | 8.83d? | 20.31d |  |  |  | 7h | 1.75h |  |
| 2 | 1.1 | **Ước lượng nỗ lực (ULNL) lần 1** |  | 1.25d | 2013-07-29 08:00 A | 2013-07-30 10:00 |  | 25% | 0.94d | 2012-01-10 14:20 | 2012-01-12 15:40 | 2.17d? | 20.31d |  |  |  | 7h | 1.75h |  |
| 3 | 1.1.1 | Tạo ULNL |  | 0.5d | 2013-07-29 08:00 A | 2013-07-29 12:00 |  | 25% | 0.38d | 2013-07-29 08:00 | 2012-01-29 17:30 | 8h? | 20.78d | 0d | start no earlier than 2013-07-29 08:00 | TienCX | 4h | 1h | KHDA |
| 4 | 1.1.2 | Xem xét ULNL |  | 1h | 2013-07-29 13:00 A | 2013-07-29 14:00 | 3 | 25% | 0.75h | 2013-07-29 08:00 | 2013-07-29 17:30 | 5.33h? | 20.75d | 0.38d | start no earlier than 2009-11-04 08:00 | CBGP [50%]; CBPT [50%] | 1h | 0.25h |  |
| 5 | 1.1.3 | Cập nhật các comment và phê duyệt ULNL |  | 0.25d | 2013-07-30 08:00 A | 2013-07-30 10:00 | 4 | 25% | 0.19d | 2012-01-12 10:40 | 2012-01-12 15:40 | 4h? | 20.31d | 0d | start no earlier than 2013-07-30 08:00 | QTDA; Trưởng/phó BU/Trưởng phòng | 2h | 0.5h |  |
| 6 | 2 | **Khởi động** |  | 3.25d? | 2013-07-30 10:00 A | 2013-08-02 12:00 |  | 25% | 2.44d? | 2012-01-02 08:00 | 2012-01-18 08:40 | 12.08d? | 19.5d |  |  |  | 54h | 13.5h |  |
| 7 | 2.1 | **Kế hoạch dự án (KHDA)** |  | 1d | 2013-07-30 10:00 A | 2013-07-31 10:00 |  | 25% | 0.75d | 2012-01-12 15:40 | 2012-01-16 17:00 | 2.17d? | 21.56d |  |  |  | 12h | 3h |  |
| 8 | 2.1.1 | Tạo KHDA (gồm cả file QLRR) |  | 4h | 2013-07-30 10:00 A | 2013-07-30 15:00 | 5 | 25% | 3h | 2012-01-12 15:40 | 2012-01-13 15:40 | 8h? | 21.69d | 0d | start no earlier than 2009-11-03 08:00 | TienCX | 4h | 1h | KHDA |
| 9 | 2.1.2 | Xem xét KHDA |  | 0.25d | 2013-07-30 15:00 A | 2013-07-30 17:00 | 8 | 25% | 0.19d | 2012-01-13 15:40 | 2012-01-16 12:00 | 5.33h? | 21.62d | 0d | start no earlier than 2009-11-04 08:00 | TNGP; TNKT; TNPT | 6h | 1.5h |  |
| 10 | 2.1.3 | Cập nhật các comment và phê duyệt KHDA | milestone | 0.25d | 2013-07-30 17:00 A | 2013-07-31 10:00 | 9 | 25% | 0.19d | 2012-01-16 12:00 | 2012-01-16 17:00 | 4h? | 21.56d | 2d | start no earlier than 2009-11-04 08:00 | Trưởng phòng/ Trưởng/phó BU; TienCX | 2h | 0.5h |  |
| 11 | 2.2 | **Kế hoạch chi tiết (KHCT)** |  | 3d? | 2013-07-30 10:00 A | 2013-08-02 10:00 |  | 25% | 2.25d? | 2012-01-12 15:40 | 2012-01-17 15:40 | 3d? | 19.56d |  |  |  | 40h | 10h |  |
| 12 | 2.2.1 | Tạo KHCT |  | 1d | 2013-07-30 10:00 A | 2013-07-31 10:00 | 5 | 25% | 0.75d | 2012-01-12 15:40 | 2012-01-13 15:40 | 8h? | 20.06d | 0d | start no earlier than 2009-11-04 08:00 | TienCX | 8h | 2h | KHCT |
| 13 | 2.2.2 | Xem xét KHCT |  | 8h? | 2013-07-31 10:00 A | 2013-08-01 10:00 | 12 | 25% | 6h? | 2012-01-13 15:40 | 2012-01-16 15:40 | 8h? | 19.81d | 0d | start no earlier than 2009-11-05 08:00 | TNGP; TNKT; TNPT | 24h | 6h |  |
| 14 | 2.2.3 | Cập nhật các comment và phê duyệt KHCT | milestone | 8h? | 2013-08-01 10:00 A | 2013-08-02 10:00 | 13 | 25% | 6h? | 2012-01-16 15:40 | 2012-01-17 15:40 | 8h? | 19.56d | 0d | start no earlier than 2009-11-06 08:00 | TienCX | 8h | 2h |  |
| 15 | 2.3 | Tổ chức họp khởi động dự án |  | 2h | 2013-08-02 10:00 A | 2013-08-02 12:00 | 14, 10 | 25% | 1.5h | 2012-01-17 15:40 | 2012-01-18 08:40 | 2h | 19.5d |  | start no earlier than 2009-11-10 08:00 | TienCX | 2h | 0.5h |  |
| 16 | 3 | **Xây dựng giải pháp** |  | 5.5d | 2013-08-02 08:00 A | 2013-08-09 12:00 |  | 40% | 3.32d | 2012-01-17 15:40 | 2012-03-21 14:40 | 45.88d? |  |  |  |  | 64h | 16h |  |
| 17 | 3.1 | **Prototype** |  | 3d | 2013-08-05 08:00 A | 2013-08-07 17:00 |  | 25% | 2.25d | 2012-01-24 11:20 | 2012-02-02 16:20 | 7.5d? | 0.95d | 0d |  |  | 32h | 8h |  |
| 18 | 3.1.1 | Xây dựng Prototype |  | 1d | 2013-08-05 08:00 A | 2013-08-05 17:00 |  | 25% | 0.75d | 2012-01-24 11:20 | 2012-01-27 11:20 | 24h? | 1.83d | 0d | start no earlier than 2013-08-05 08:00 | DoanPV | 8h | 2h | Prototype |
| 19 | 3.1.2 | Xem xét nội bộ Prototype |  | 0.25d | 2013-08-06 08:00 A | 2013-08-06 10:00 | 18 | 25% | 0.19d | 2012-01-27 11:20 | 2012-01-30 11:20 | 8h? | 1.77d | 0d | start no earlier than 2009-12-03 08:00 | TienCX; DucPA; DoanhPV | 6h | 1.5h |  |
| 20 | 3.1.3 | Cập nhật comment và phê duyệt nội bộ Prototype |  | 0.25d | 2013-08-06 10:00 A | 2013-08-06 12:00 | 19 | 25% | 0.19d | 2012-01-30 11:20 | 2012-01-31 16:20 | 12h? | 1.7d | 0.5d | finish no earlier than 2009-12-05 17:30 | DoanhPV | 2h | 0.5h |  |
| 21 | 3.1.4 | Họp demo/thống nhất email Prototype với khách hàng |  | 0.5d | 2013-08-07 08:00 A | 2013-08-07 12:00 | 20 | 25% | 0.38d | 2012-01-31 16:20 | 2012-02-01 16:20 | 8h? | 1.08d | 0d | start no earlier than 2013-08-07 08:00 | TienCX; DoanPV; DucPA | 12h | 3h | BBH có chữ ký |
| 22 | 3.1.5 | Cập nhật Prototype sau họp demo |  | 0.5d | 2013-08-07 13:00 A | 2013-08-07 17:00 | 21 | 25% | 0.38d | 2012-02-01 16:20 | 2012-02-02 16:20 | 8h? | 0.95d |  | start no earlier than 2009-12-08 08:00 | DoanhPV | 4h | 1h |  |
| 23 | 3.2 | **Phân tích yêu cầu (PTYC)** |  | 1.5d | 2013-08-07 17:00 A | 2013-08-09 12:00 | 17 | 64% | 0.55d | 2012-02-02 16:20 | 2012-02-20 11:20 | 11.5d? | 0d |  |  |  | 12h | 3h |  |
| 24 | 3.2.1 | Tạo tài liệu PTYC |  | 1.5d | 2013-08-08 08:00 A | 2013-08-09 12:00 A | 17 | 100% |  | 2012-02-02 16:20 | 2012-02-13 11:20 | 52h? |  |  | finish no earlier than 2013-08-02 17:30 | TienCX |  |  | PTYC |
| 25 | 3.2.2 | Xem xét PTYC |  | 0.5d | 2013-08-08 08:00 A | 2013-08-08 12:00 |  | 25% | 0.38d | 2012-02-13 11:20 | 2012-02-14 11:20 | 8h? | 0.62d | 0d | start no earlier than 2013-08-02 08:00 | TienCX; DucPA [50%] | 6h | 1.5h |  |
| 26 | 3.2.3 | Cập nhật các comment và phê duyệt nội bộ PTYC |  | 0.25d | 2013-08-08 13:00 A | 2013-08-08 15:00 | 25 | 25% | 0.19d | 2012-02-14 11:20 | 2012-02-16 11:20 | 16h? | 0.56d | 0d | finish no earlier than 2009-11-26 17:30 | TienCX | 2h | 0.5h |  |
| 27 | 3.2.4 | Họp thống nhất PTYC với khách hàng |  | 0.25d | 2013-08-08 15:00 A | 2013-08-08 17:00 | 26 | 25% | 0.19d | 2012-02-16 11:20 | 2012-02-17 11:20 | 8h? | 0.5d |  | start no earlier than 2013-08-05 08:00 | DucPA; TienCX | 4h | 1h |  |
| 28 | 3.2.5 | Cập nhật PTYC sau họp thống nhất | milestone | 0.25d | 2013-08-07 17:00 A | 2013-08-08 10:00 |  |  | 0.25d | 2012-02-17 11:20 | 2012-02-20 11:20 | 8h? | 1.25d |  | start no earlier than 2013-08-02 08:00 | TienCX |  |  | BBH có chữ ký |

| ID | WBS | Task | Duration | Start | Finish | Predecessors | Complete | Remaining | Baseline start | Baseline finish | Baseline duration | Total slack | Free slack | Constraint | Resources | Work | Actual work | Text1 |
| --- | --- | --- | --- | --- | --- | --- | --- | --- | --- | --- | --- | --- | --- | --- | --- | --- | --- | --- |
| 29 | 3.3 | **Thiết kế cơ sở dữ liệu (TKCSDL)** | 2d | 2013-08-02 08:00 A | 2013-08-05 17:00 |  | 25% | 1.5d | 2012-03-05 08:20 | 2012-03-12 13:20 | 5.5d? | 3.5d |  |  |  | 20h | 5h |  |
| 30 | 3.3.1 | Tạo tài liệu TKCSDLvà mapDSYC | 1.5d | 2013-08-02 08:00 A | 2013-08-05 12:00 |  | 25% | 1.12d | 2012-03-05 08:20 | 2012-03-08 08:20 | 24h? | 3.62d | 0d | start no earlier than 2013-08-02 08:00 | TienCX | 12h | 3h | TKCSDL |
| 31 | 3.3.2 | Xem xét TKCSDL và mapDSYC | 0.25d | 2013-08-05 13:00 A | 2013-08-05 15:00 | 30 | 25% | 0.19d | 2012-03-08 08:20 | 2012-03-09 08:20 | 8h? | 3.56d | 0d | finish no earlier than 2009-12-18 17:30 | TienCX; DucPA | 4h | 1h |  |
| 32 | 3.3.3 | Cập nhật các comment và phê duyệt TKCSDL | 0.25d | 2013-08-05 15:00 A | 2013-08-05 17:00 | 31 | 25% | 0.19d | 2012-03-09 08:20 | 2012-03-12 13:20 | 12h? | 3.5d |  | finish no earlier than 2009-12-21 17:30 | TienCX | 4h | 1h |  |
| 33 | 4 | **Lập trình** | 10.5d | 2013-08-15 08:00 A | 2013-08-29 12:00 |  | 75% | 2.61d | 2012-03-19 13:20 | 2012-04-24 08:20 | 25.5d? | 0.5d |  |  |  | 148h | 111.2h |  |
| 34 | 4.1 | **Danh mục** | 4.5d | 2013-08-20 08:00 A | 2013-08-26 12:00 A |  | 100% |  |  |  |  |  |  |  |  | 36h | 36h |  |
| 35 | 4.1.1 | Danh mục dự án | 1.5d | 2013-08-20 08:00 A | 2013-08-21 12:00 A |  | 100% |  |  |  |  |  |  | start no earlier than 2013-08-20 08:00 | QuyenNT11 | 12h | 12h |  |
| 36 | 4.1.2 | Khóa học | 1d | 2013-08-21 13:00 A | 2013-08-22 12:00 A | 35 | 100% |  |  |  |  |  |  |  | QuyenNT11 | 8h | 8h |  |
| 37 | 4.1.3 | Kỹ năng | 1d | 2013-08-22 13:00 A | 2013-08-23 12:00 A | 36 | 100% |  |  |  |  |  |  |  | QuyenNT11 | 8h | 8h |  |
| 38 | 4.1.4 | Nhóm kỹ năng | 1d | 2013-08-23 13:00 A | 2013-08-26 12:00 A | 37 | 100% |  |  |  |  |  |  |  | QuyenNT11 | 8h | 8h |  |
| 39 | 4.2 | **Thông tin cá nhân** | 2.5d | 2013-08-27 08:00 A | 2013-08-29 12:00 |  | 56% | 1.1d |  |  |  | 0.5d |  |  |  | 20h | 11.2h |  |
| 40 | 4.2.1 | Xem Thông tin chung | 0.5d | 2013-08-27 08:00 A | 2013-08-27 12:00 |  | 80% | 0.1d |  |  |  | 1.5d | 0d | start no earlier than 2013-08-27 08:00 | DungVV8 | 4h | 3.2h |  |
| 41 | 4.2.2 | Đồng bộ thông tin từ PMQLNS | 1d | 2013-08-27 13:00 | 2013-08-28 12:00 | 40 |  |  |  |  |  | 1.5d |  |  | ThanhNX14 | 8h |  |  |
| 42 | 4.2.3 | Tìm kiếm nhân viên | 1d | 2013-08-28 13:00 A | 2013-08-29 12:00 A | 41, 65 | 100% |  |  |  |  |  |  |  | QuyenNT11 | 8h | 8h |  |
| 43 | 4.3 | **Kỹ năng** | 3.5d | 2013-08-15 08:00 A | 2013-08-20 12:00 A |  | 100% |  |  |  |  |  |  |  |  | 26h | 26h |  |
| 44 | 4.3.1 | Nhập thông tin kỹ năng | 1d | 2013-08-15 08:00 A | 2013-08-15 17:00 A |  | 100% |  |  |  |  |  |  | start no earlier than 2013-08-15 08:00 | ThanhNX14 | 8h | 8h |  |
| 45 | 4.3.2 | Cập nhật ky năng | 0.25d | 2013-08-16 08:00 A | 2013-08-16 10:00 A | 44 | 100% |  |  |  |  |  |  |  | ThanhNX14 | 2h | 2h |  |
| 46 | 4.3.3 | Tìm kiếm thông tin | 1d | 2013-08-16 10:00 A | 2013-08-19 10:00 A | 45 | 100% |  |  |  |  |  |  |  | ThanhNX14 | 8h | 8h |  |
| 47 | 4.3.4 | Xóa thông tin kỹ năng | 0.25d | 2013-08-19 10:00 A | 2013-08-19 12:00 A | 46 | 100% |  |  |  |  |  |  |  | ThanhNX14 | 2h | 2h |  |
| 48 | 4.3.5 | Download chứng chỉ | 0.5d | 2013-08-20 08:00 A | 2013-08-20 12:00 A | 47 | 100% |  |  |  |  |  |  | start no earlier than 2013-08-20 08:00 | ThanhNX14 | 4h | 4h |  |
| 49 | 4.3.6 | Phê duyệt kỹ năng | 0.25d | 2013-08-20 08:00 A | 2013-08-20 10:00 A | 48 | 100% |  |  |  |  |  |  |  | ThanhNX14 | 2h | 2h |  |
| 50 | 4.4 | **Kinh nghiệm làm việc** | 4.25d | 2013-08-21 08:00 A | 2013-08-27 10:00 |  | 35% | 2.75d |  |  |  | 2.75d |  |  |  | 34h | 12h |  |
| 51 | 4.4.1 | Nhập thông tin kinh nghiệm làm việc | 1.5d | 2013-08-21 08:00 A | 2013-08-22 12:00 A |  | 100% |  |  |  |  |  |  | start no earlier than 2013-08-21 08:00 | ThanhNX14 | 12h | 12h |  |
| 52 | 4.4.2 | Cập nhật kinh nghiệm | 0.25d | 2013-08-22 13:00 | 2013-08-22 15:00 | 51 |  |  |  |  |  | 2.75d | 0d |  | ThanhNX14 | 2h |  |  |
| 53 | 4.4.3 | Tìm kiếm thông tin | 1.5d | 2013-08-22 15:00 | 2013-08-26 10:00 | 52 |  |  |  |  |  | 2.75d | 0d |  | ThanhNX14 | 12h |  |  |
| 54 | 4.4.4 | Xóa thông tin | 0.25d | 2013-08-26 10:00 | 2013-08-26 12:00 | 53 |  |  |  |  |  | 2.75d | 0d |  | ThanhNX14 | 2h |  |  |
| 55 | 4.4.5 | Export | 0.5d | 2013-08-26 13:00 | 2013-08-26 17:00 | 54 |  |  |  |  |  | 2.75d | 0d |  | ThanhNX14 | 4h |  |  |
| 56 | 4.4.6 | Phê duyệt | 0.25d | 2013-08-27 08:00 | 2013-08-27 10:00 | 55 |  |  |  |  |  | 2.75d |  |  | ThanhNX14 | 2h |  |  |

| ID | WBS | Task | Type | Duration | Start | Finish | Predecessors | Complete | Remaining | Baseline start | Baseline finish | Baseline duration | Total slack | Free slack | Constraint | Resources | Work | Actual work | Text1 |
| --- | --- | --- | --- | --- | --- | --- | --- | --- | --- | --- | --- | --- | --- | --- | --- | --- | --- | --- | --- |
| 57 | 4.5 | **Quá trình đào tạo** |  | 4d | 2013-08-21 08:00 A | 2013-08-26 17:00 |  | 81% | 0.75d |  |  |  | 3d |  |  |  | 32h | 26h |  |
| 58 | 4.5.1 | Nhập thông tin đào tạo |  | 1.5d | 2013-08-21 08:00 A | 2013-08-22 12:00 A |  | 100% |  |  |  |  |  |  | start no earlier than 2013-08-21 08:00 | DungVV8 | 12h | 12h |  |
| 59 | 4.5.2 | Cập nhật |  | 0.25d | 2013-08-22 13:00 | 2013-08-22 15:00 | 58 |  |  |  |  |  | 5.25d |  |  | DungVV8 | 2h |  |  |
| 60 | 4.5.3 | Tìm kiếm thông tin |  | 1.5d | 2013-08-22 15:00 A | 2013-08-26 10:00 A | 59 | 100% |  |  |  |  |  |  |  | DungVV8 | 12h | 12h |  |
| 61 | 4.5.4 | Export |  | 0.5d | 2013-08-26 10:00 | 2013-08-26 15:00 | 60 |  |  |  |  |  | 3.25d |  |  | DungVV8 | 4h |  |  |
| 62 | 4.5.5 | Xóa thông tin |  | 0.25d | 2013-08-26 15:00 A | 2013-08-26 17:00 A | 61 | 100% |  |  |  |  |  |  |  | DungVV8 | 2h | 2h |  |
| 63 | 5 | **Unitest** |  | 5.5d | 2013-08-20 08:00 A | 2013-08-27 12:00 |  | 40% | 3.3d |  |  |  | 2.5d |  |  |  | 20h | 8h |  |
| 64 | 5.1 | Danh mục |  | 0.5d | 2013-08-26 13:00 A | 2013-08-26 17:00 A | 38 | 100% |  |  |  |  |  |  |  | QuyenNT11 | 4h | 4h |  |
| 65 | 5.2 | Thông tin cá nhân |  | 0.5d | 2013-08-26 08:00 | 2013-08-26 12:00 |  |  |  |  |  |  | 2.5d | 2d | start no earlier than 2013-08-26 08:00 | ThanhNX14 | 4h |  |  |
| 66 | 5.3 | Kỹ năng |  | 0.5d | 2013-08-20 08:00 A | 2013-08-20 12:00 A |  | 100% |  |  |  |  |  |  | start no earlier than 2013-08-20 08:00 | ThanhNX14 | 4h | 4h |  |
| 67 | 5.4 | Kinh nghiệm làm việc |  | 0.5d | 2013-08-27 08:00 | 2013-08-27 12:00 |  |  |  |  |  |  | 2.5d |  | start no earlier than 2013-08-27 08:00 | ThanhNX14 | 4h |  |  |
| 68 | 5.5 | Quá trình đào tạo |  | 0.5d | 2013-08-26 08:00 | 2013-08-26 12:00 |  |  |  |  |  |  | 3.5d |  | start no earlier than 2013-08-26 08:00 | DungVV8 | 4h |  |  |
| 69 | 6 | **Các task khác** |  | 8.25d | 2013-08-14 08:00 A | 2013-08-26 10:00 A |  | 100% |  |  |  |  |  |  |  |  | 28h | 28h |  |
| 70 | 6.1 | Dựng môi trường |  | 1.5d | 2013-08-14 08:00 A | 2013-08-15 12:00 A |  | 100% |  |  |  |  |  |  | start no earlier than 2013-08-14 08:00 | ThanhNX4 | 12h | 12h |  |
| 71 | 6.2 | Apply filter strust |  | 0.25d | 2013-08-19 08:00 A | 2013-08-19 10:00 A |  | 100% |  |  |  |  |  |  |  | ThanhNX4 | 2h | 2h |  |
| 72 | 6.3 | Hỗ trợ dựng môi trường |  | 1d | 2013-08-14 08:00 A | 2013-08-14 17:00 A |  | 100% |  |  |  |  |  |  |  | DoanhPV | 8h | 8h |  |
| 73 | 6.4 | Cập nhật kế hoạch chi tiết |  | 0.25d | 2013-08-19 08:00 A | 2013-08-19 10:00 A |  | 100% |  |  |  |  |  |  |  | QuyenNT11 | 2h | 2h |  |
| 74 | 6.5 | Xin CR kết nối |  | 0.25d | 2013-08-23 08:00 A | 2013-08-23 10:00 A |  | 100% |  |  |  |  |  |  |  | QuyenNT11 | 2h | 2h |  |
| 75 | 6.6 | Quản lý tiến độ, cập nhật khct tuần 4 tháng 8 |  | 0.25d | 2013-08-26 08:00 A | 2013-08-26 10:00 A |  | 100% |  |  |  |  |  |  |  | QuyenNT11 | 2h | 2h |  |
| 76 | 7 | **Kiểm thử** |  | 9.5d? | 2013-08-09 12:00 A | 2013-08-22 17:00 | 16 | 25% | 7.12d? |  | 2012-04-30 13:20 |  | -6d | 0d |  |  | 452h | 98.74h |  |
| 77 | 7.1 | **Kịch bản kiểm thử (KBKTCN và KBKTHN)** |  | 1.5d | 2013-08-09 13:00 A | 2013-08-12 17:00 |  | 25% | 1.12d | 2012-03-01 11:20 | 2012-03-09 16:20 | 6.5d? | 0d |  |  |  | 14h | 3.5h |  |
| 78 | 7.1.1 | Tạo tài liệu KBKT và mapDSYC |  | 1d | 2013-08-09 13:00 A | 2013-08-12 12:00 |  | 25% | 0.75d | 2012-03-01 11:20 | 2012-03-06 16:20 | 28h? | -668.22d | 0d | start no earlier than 2013-08-06 08:00 | CBKT | 8h | 2h | KBKT |
| 79 | 7.1.2 | Xem xét KBKT và mapDSYC |  | 0.25d | 2013-08-12 13:00 A | 2013-08-12 15:00 | 78 | 25% | 0.19d | 2012-03-06 16:20 | 2012-03-07 16:20 | 8h? | -668.47d | 0d | finish no earlier than 2010-01-11 17:30 | TienCX | 2h | 0.5h |  |
| 80 | 7.1.3 | Cập nhật các comment và phê duyệt KBKT và mapDSYC | milestone | 0.25d | 2013-08-12 15:00 A | 2013-08-12 17:00 | 79 | 26% | 0.19d | 2012-03-07 16:20 | 2012-03-09 16:20 | 16h? | -668.72d | 0d | finish no earlier than 2010-01-12 17:30 | CBKT [66.7%]; QTDA [66.7%]; TNKT [66.7%] | 4h | 1h |  |

| ID | WBS | Task | Type | Duration | Start | Finish | Predecessors | Complete | Remaining | Baseline start | Baseline finish | Baseline duration | Total slack | Free slack | Constraint | Resources | Work | Actual work | Text1 |
| --- | --- | --- | --- | --- | --- | --- | --- | --- | --- | --- | --- | --- | --- | --- | --- | --- | --- | --- | --- |
| 81 | 7.2 | **Kiểm thử chương trình và sửa lỗi (đảm bảo nỗ lực kiểm thử chương trình map với nỗ lực ULNL kiểm thử)** |  | 3d? | 2013-08-09 13:00 A | 2013-08-14 12:00 |  | 25% | 2.25d? | 2012-04-13 13:20 | 2012-04-18 13:20 | 3d? | 0d |  |  |  | 122h | 30.49h |  |
| 82 | 7.2.1 | **Chuẩn bị môi trường kiểm thử** |  | 1d? | 2013-08-09 13:00 A | 2013-08-12 12:00 |  | 61% | 0.39d? | 2012-01-02 08:00 | 2012-01-02 17:00 | 1d? | 0d |  |  |  | 10h | 6.07h |  |
| 83 | 7.2.1.1 | Chuẩn bị môi trường kiểm thử chức năng |  | 0.25d | 2013-08-09 13:00 A | 2013-08-09 15:00 A |  | 100% |  |  |  |  |  |  |  | CBPT | 2h | 2h |  |
| 84 | 7.2.1.2 | Gửi phiếu yêu cầu p.CN dựng môi trường kiểm thử hiệu năng |  | 1d? | 2013-08-09 13:00 A | 2013-08-12 12:00 |  | 51% | 0.49d? |  |  |  | -668.22d | 0d |  | QTDA | 8h | 4.07h |  |
| 85 | 7.2.2 | **Giai đoạn 1** |  | 3d? | 2013-08-09 13:00 A | 2013-08-14 12:00 |  | 22% | 2.35d? | 2012-04-13 13:20 | 2012-04-18 13:20 | 3d? | -2d | 0d |  |  | 56h | 12.21h |  |
| 86 | 7.2.2.1 | **Kiểm thử chương trình** |  | 3d? | 2013-08-09 13:00 A | 2013-08-14 12:00 |  | 25% | 2.24d? | 2012-04-13 13:20 | 2012-04-18 13:20 | 3d? | -2d | 0d |  |  | 32h | 8.14h |  |
| 87 | 7.2.2.1.1 | **Kiểm thử chương trình lần 1** |  | 3d? | 2013-08-09 13:00 A | 2013-08-14 12:00 |  | 17% | 2.49d? | 2012-04-13 13:20 | 2012-04-18 13:20 | 3d? | -2d | 0d |  |  | 24h | 4.07h |  |
| 88 | 7.2.2.1.1.1 | Tiến trình đồng bộ thông tin nhân viên từ VHR |  | 8h? | 2013-08-09 13:00 A | 2013-08-12 12:00 |  | 51% | 3.93h? | 2012-04-13 13:20 | 2012-04-16 13:20 | 8h? | -670.22d | 0d |  | CBKT | 8h | 4.07h |  |
| 89 | 7.2.2.1.1.2 | Chức năng quản lý kĩ năng |  | 8h? | 2013-08-12 13:00 | 2013-08-13 12:00 | 88 |  |  | 2012-04-16 13:20 | 2012-04-17 13:20 | 8h? | -670.22d | 0d |  | CBKT | 8h |  |  |
| 90 | 7.2.2.1.1.3 | Chức năng quản lý kinh nghiệm |  | 8h? | 2013-08-13 13:00 | 2013-08-14 12:00 | 89 |  |  | 2012-04-17 13:20 | 2012-04-18 13:20 | 8h? | -670.22d | 0d |  | CBKT | 8h |  |  |
| 91 | 7.2.2.1.2 | Kiểm thử chức năng lần 2 ((retest,kiểm thử sửa lỗi) |  | 1d? | 2013-08-09 13:00 A | 2013-08-12 12:00 |  | 51% | 0.49d? | 2012-04-13 13:20 | 2012-04-16 13:20 | 1d? | -668.22d | 0d |  | CBKT | 8h | 4.07h |  |
| 92 | 7.2.2.2 | **Sửa lỗi** |  | 3d? | 2013-08-09 13:00 A | 2013-08-14 12:00 |  | 17% | 2.49d? | 2012-04-13 13:20 | 2012-04-18 13:20 | 3d? | -2d | 0d |  |  | 24h | 4.07h |  |
| 93 | 7.2.2.2.1 | Module1 |  | 8h? | 2013-08-09 13:00 A | 2013-08-12 12:00 |  | 51% | 3.93h? | 2012-04-13 13:20 | 2012-04-16 13:20 | 8h? | -670.22d | 0d |  | CBPT | 8h | 4.07h |  |
| 94 | 7.2.2.2.2 | Module2 |  | 8h? | 2013-08-12 13:00 | 2013-08-13 12:00 | 93 |  |  | 2012-04-16 13:20 | 2012-04-17 13:20 | 8h? | -670.22d | 0d |  | CBPT | 8h |  |  |
| 95 | 7.2.2.2.3 | Module3 |  | 8h? | 2013-08-13 13:00 | 2013-08-14 12:00 | 94 |  |  | 2012-04-17 13:20 | 2012-04-18 13:20 | 8h? | -670.22d | 0d |  | CBPT | 8h |  |  |
| 96 | 7.2.3 | **Kiểm thử hiệu năng** |  | 3d? | 2013-08-09 13:00 A | 2013-08-14 12:00 |  | 22% | 2.35d? | 2012-04-13 13:20 | 2012-04-18 13:20 | 3d? | 0d |  |  |  | 56h | 12.21h |  |
| 97 | 7.2.3.1 | **Kiểm thử chương trình** |  | 3d? | 2013-08-09 13:00 A | 2013-08-14 12:00 |  | 25% | 2.24d? | 2012-04-13 13:20 | 2012-04-18 13:20 | 3d? | 0d |  |  |  | 32h | 8.14h |  |
| 98 | 7.2.3.1.1 | Kiểm thử chương trình lần 1 |  | 3d? | 2013-08-09 13:00 A | 2013-08-14 12:00 |  | 17% | 2.49d? | 2012-04-13 13:20 | 2012-04-18 13:20 | 3d? | -670.22d | 0d |  | CBKT | 24h | 4.07h |  |
| 99 | 7.2.3.1.2 | Kiểm thử chức năng lần 2 (retest,kiểm thử sửa lỗi) |  | 1d? | 2013-08-09 13:00 A | 2013-08-12 12:00 |  | 51% | 0.49d? | 2012-04-13 13:20 | 2012-04-16 13:20 | 1d? | -668.22d | 0d |  | CBKT | 8h | 4.07h |  |
| 100 | 7.2.3.2 | Sửa lỗi |  | 3d? | 2013-08-09 13:00 A | 2013-08-14 12:00 |  | 17% | 2.49d? | 2012-04-13 13:20 | 2012-04-18 13:20 | 3d? | -670.22d | 0d |  | CBPT | 24h | 4.07h |  |
| 101 | 7.3 | Báo cáo kiểm thử (BCKT) |  | 1d? | 2013-08-09 13:00 A | 2013-08-12 12:00 |  | 25% | 0.75d? | 2012-04-18 13:20 | 2012-04-24 13:20 | 4d? | -668.22d | 0d |  |  |  |  |  |
| 102 | 7.4 | **Hướng dẫn sử dụng (HDSD)** |  | 4.5d? | 2013-08-09 13:00 A | 2013-08-15 17:00 |  | 25% | 3.38d? | 2012-04-18 13:20 | 2012-04-25 08:20 | 4.5d? | -1d | 0d |  |  | 64h | 10h |  |
| 103 | 7.4.1 | Tạo tài liệu HDSD |  | 8h? | 2013-08-09 13:00 A | 2013-08-12 12:00 A |  | 100% |  | 2012-04-18 13:20 | 2012-04-19 13:20 | 8h? |  |  | start no earlier than 2010-01-26 08:00 | CBKT | 8h | 8h | HDSD |
| 104 | 7.4.2 | Xem xét HDSD |  | 20h? | 2013-08-12 13:00 A | 2013-08-14 17:00 | 103 | 5% | 19h? | 2012-04-19 13:20 | 2012-04-24 08:20 | 20h? | -671.72d | 0d | start no earlier than 2010-01-26 08:00 | QTDA; TNKT | 40h | 2h |  |
| 105 | 7.4.3 | Cập nhật các comment và phê duyệt HDSD | milestone | 8h? | 2013-08-15 08:00 | 2013-08-15 17:00 | 104 |  |  | 2012-04-24 08:20 | 2012-04-25 08:20 | 8h? | -671.72d | 0d | start no earlier than 2010-01-26 08:00 | CBKT; QTDA | 16h |  |  |
| 106 | 7.5 | Ký biên bản nghiệm thu nội bộ | milestone | 0h? | 2013-08-09 12:00 A | 2013-08-09 12:00 |  | 25% | 0h? | 2012-04-24 13:20 | 2012-04-25 13:20 | 8h? | -667.22d | 0d | start no earlier than 2010-01-27 08:00 | QTDA; CBGP; TNPT; CBKT; TNKT; TNGP; CBPT |  |  | BBH, BB KTNT NB |

| ID | WBS | Task | Type | Duration | Start | Finish | Predecessors | Complete | Remaining | Baseline start | Baseline finish | Baseline duration | Total slack | Free slack | Constraint | Resources | Work | Actual work | Text1 |
| --- | --- | --- | --- | --- | --- | --- | --- | --- | --- | --- | --- | --- | --- | --- | --- | --- | --- | --- | --- |
| 107 | 7.6 | **Kiểm thử nghiệm thu** |  | 9.5d? | 2013-08-09 13:00 A | 2013-08-22 17:00 |  | 25% | 7.12d? | 2012-04-24 13:20 | 2012-04-30 13:20 | 4d? | -6d | 0d |  |  | 188h | 50.75h |  |
| 108 | 7.6.1 | **Kịch bản kiểm thử nghiêm thu (KBKT)** |  | 6.5d? | 2013-08-09 13:00 A | 2013-08-19 17:00 |  | 14% | 5.59d? | 2012-04-18 13:20 | 2012-04-27 08:20 | 6.5d? | -3d | 0d |  |  | 100h | 7.25h |  |
| 109 | 7.6.1.1 | Tạo tài liệu KBKT |  | 28h? | 2013-08-09 13:00 A | 2013-08-14 17:00 |  | 26% | 20.75h? | 2012-04-18 13:20 | 2012-04-24 08:20 | 28h? | -676.72d | 0d | finish no earlier than 2010-01-09 17:30 | CBKT | 28h | 7.25h | KBKT |
| 110 | 7.6.1.2 | Họp xem xét KBKT |  | 8h? | 2013-08-15 08:00 | 2013-08-15 17:00 | 109 |  |  | 2012-04-24 08:20 | 2012-04-25 08:20 | 8h? | -676.72d | 0d | finish no earlier than 2010-01-11 17:30 | QTDA; TNGP; TNKT; TNPT; CBKT | 40h |  |  |
| 111 | 7.6.1.3 | Cập nhật các comment và phê duyệt KBKT |  | 16h? | 2013-08-16 08:00 | 2013-08-19 17:00 | 110 |  |  | 2012-04-25 08:20 | 2012-04-27 08:20 | 16h? | -676.72d | 0d | finish no earlier than 2010-01-12 17:30 | CBKT [66.7%]; QTDA [66.7%]; TNKT [66.7%] | 32h |  |  |
| 112 | 7.6.2 | **Nghiệm thu trước upcode với khách hàng** |  | 2d? | 2013-08-19 17:00 | 2013-08-21 17:00 |  |  |  | 2012-04-25 13:20 | 2012-04-30 13:20 | 3d? | -675.72d | 0d |  |  | 16h |  |  |
| 113 | 7.6.2.1 | Hỗ trợ nghiệm thu trước upcode | milestone | 0h? | 2013-08-19 17:00 | 2013-08-19 17:00 | 111 |  |  | 2012-04-25 13:20 | 2012-04-25 13:20 | 0h? | -675.72d | 0d | finish no earlier than 2010-01-28 08:00 | QTDA; CBGP; TNPT; CBKT; TNKT; TNGP; CBPT |  |  |  |
| 114 | 7.6.2.2 | Lấy biên bản Kiểm thử nghiệm thu (Acceptance test) trước upcode | milestone | 16h? | 2013-08-20 08:00 | 2013-08-21 17:00 | 113 |  |  | 2012-04-26 13:20 | 2012-04-30 13:20 | 16h? | -675.72d | 0d | finish no earlier than 2010-01-29 17:30 | QTDA | 16h |  | Acceptance test |
| 115 | 7.6.3 | **Nghiệm thu sau upcode với khách hàng** |  | 3d? | 2013-08-20 08:00 | 2013-08-22 17:00 |  |  |  | 2012-04-25 13:20 | 2012-04-30 13:20 | 3d? | -676.72d | 0d |  |  | 24h |  |  |
| 116 | 7.6.3.1 | Hỗ trợ nghiệm thu sau upcode |  | 8h? | 2013-08-20 08:00 | 2013-08-20 17:00 | 111 |  |  | 2012-04-25 13:20 | 2012-04-26 13:20 | 8h? | -676.72d | 0d | start no earlier than 2010-01-28 08:00 | TNKT | 8h |  | Phiếu YKKH |
| 117 | 7.6.3.2 | Lấy biên bản Kiểm thử nghiệm thu (Acceptance test) sau upcode |  | 16h? | 2013-08-21 08:00 | 2013-08-22 17:00 | 116 |  |  | 2012-04-26 13:20 | 2012-04-30 13:20 | 16h? | -676.72d | 0d | finish no earlier than 2010-01-29 17:30 | QTDA | 16h |  | Acceptance test |
| 118 | 7.6.4 | **Tạo báo cáo lỗi lọt (nếu có)** |  | 1d? | 2013-08-09 13:00 A | 2013-08-12 12:00 |  | 91% | 0.09d? | 2012-04-25 13:20 | 2012-04-26 13:20 | 1d? | 0d |  |  |  | 48h | 43.5h |  |
| 119 | 7.6.4.1 | Tạo báo cáo lỗi lọt |  | 1d? | 2013-08-09 13:00 A | 2013-08-12 12:00 |  | 91% | 0.09d? |  |  |  | -668.22d | 0d |  | QTDA; TNKT; TNPT | 24h | 21.75h |  |
| 120 | 7.6.4.2 | Xem xét báo cáo lỗi lọt |  | 1d? | 2013-08-09 13:00 A | 2013-08-12 12:00 |  | 91% | 0.09d? |  |  |  | -668.22d | 0d |  | CBKT; CBPT | 16h | 14.5h |  |
| 121 | 7.6.4.3 | Ký thống nhất báo cáo lỗi lọt |  | 1d? | 2013-08-09 13:00 A | 2013-08-12 12:00 |  | 91% | 0.09d? |  |  |  | -668.22d | 0d |  | QTDA | 8h | 7.25h |  |
| 122 | 7.7 | **Milestone** |  | 2d? | 2013-08-12 13:00 A | 2013-08-14 12:00 |  | 25% | 1.5d? | 2012-04-26 13:20 | 2012-04-30 13:20 | 2d? | -1d | 0d |  |  | 64h | 4h |  |
| 123 | 7.7.1 | Tạo báo cáo milestone |  | 8h? | 2013-08-12 13:00 A | 2013-08-13 12:00 | 121 | 50% | 4h? | 2012-04-26 13:20 | 2012-04-27 13:20 | 8h? | -670.22d | 0d | start no earlier than 2010-01-27 08:00 | QTDA | 8h | 4h | Báo cáo |
| 124 | 7.7.2 | Xem xét và họp milestone kết thúc giai đoạn kiểm thử | milestone | 8h? | 2013-08-13 13:00 | 2013-08-14 12:00 | 123 |  |  | 2012-04-27 13:20 | 2012-04-30 13:20 | 8h? | -670.22d | 0d | start no earlier than 2010-01-27 08:00 | TNGP; TNKT; TNPT; QTDA; CBGP; CBKT; CBPT | 56h |  | BBH |
| 125 | 8 | **Triển khai** |  | 949d? | 2010-01-04 08:00 A | 2013-08-28 17:00 | 76 | 28% | 681.72d? |  | 2012-05-04 13:20 |  | 1d |  |  |  | 180h | 44.5h |  |
| 126 | 8.1 | **Hướng dẫn cài đặt** |  | 945.5d? | 2010-01-04 08:00 A | 2013-08-23 12:00 |  | 67% | 315.17d? | 2012-04-12 13:20 | 2012-04-16 08:20 | 1.5d? | 4.5d |  |  |  | 16h | 8h |  |
| 127 | 8.1.1 | Tạo tài liệu HDCD |  | 8h | 2010-01-04 08:00 A | 2010-01-04 17:30 A |  | 100% |  | 2012-04-12 13:20 | 2012-04-13 13:20 | 8h |  |  | finish no earlier than 2010-01-04 17:30 | CBPT | 8h | 8h | HDCD |
| 128 | 8.1.2 | Xem xét HDCD |  | 4h | 2013-08-23 08:00 | 2013-08-23 12:00 | 127 |  |  | 2012-04-13 13:20 | 2012-04-16 08:20 | 4h | 4.5d | 0d | start no earlier than 2010-01-05 08:00 | QTDA; TNPT | 8h |  |  |
| 129 | 8.1.3 | Cập nhật các comment và phê duyệt HDCD | milestone | 0h? | 2010-01-05 12:00 A | 2010-01-05 12:00 | 128 | 99% | 0h? | 2012-04-16 08:20 | 2012-04-16 08:20 | 0h? | 948.5d |  | start no earlier than 2010-01-05 08:00 | CBPT; QTDA |  |  |  |
| 130 | 8.2 | Gửi yêu cầu kiểm tra bảo mật thông tin |  | 1d? | 2013-08-23 08:00 A | 2013-08-23 17:00 |  | 46% | 0.54d? | 2012-04-30 13:20 | 2012-05-01 13:20 | 1d? | 4d |  |  | CBTK | 8h | 3.65h |  |
| 131 | 8.3 | Sửa lỗi bảo mật |  | 1d? | 2013-08-23 08:00 A | 2013-08-23 17:00 |  | 46% | 0.54d? | 2012-04-30 13:20 | 2012-05-01 13:20 | 1d? | 4d |  |  | CBPT | 8h | 3.65h |  |
| 132 | 8.4 | Phối hợp cài đặt hệ thống (nếu đơn vị vận hành là TT CNTT) |  | 1d? | 2013-08-23 08:00 A | 2013-08-23 17:00 |  | 46% | 0.54d? | 2012-04-30 13:20 | 2012-05-01 13:20 | 1d? | 4d |  |  | CBTK | 8h | 3.65h |  |

| ID | WBS | Task | Type | Duration | Start | Finish | Predecessors | Complete | Remaining | Baseline start | Baseline finish | Baseline duration | Total slack | Free slack | Constraint | Resources | Work | Actual work | Text1 |
| --- | --- | --- | --- | --- | --- | --- | --- | --- | --- | --- | --- | --- | --- | --- | --- | --- | --- | --- | --- |
| 133 | 8.5 | **Đào tạo và bàn giao hướng dẫn sử dụng** |  | 0.5d? | 2013-08-23 08:00 A | 2013-08-23 12:00 |  | 91% | 0.04d? | 2012-04-30 13:20 | 2012-05-01 08:20 | 0.5d? | 4.5d |  |  |  | 4h | 3.65h |  |
| 134 | 8.5.1 | Đào tạo người sử dụng |  | 4h? | 2013-08-23 08:00 A | 2013-08-23 12:00 |  | 91% | 0.35h? | 2012-04-30 13:20 | 2012-05-01 08:20 | 4h? | 0d |  | start no earlier than 2010-01-29 17:30 | TNKT | 4h | 3.65h | BB đào tạo |
| 135 | 8.5.2 | Bàn giao tài liệu HDSD | milestone | 0h? | 2013-08-23 12:00 | 2013-08-23 12:00 | 134 |  |  | 2012-05-01 08:20 | 2012-05-01 08:20 | 0h? | 0d |  | finish no earlier than 2010-01-29 08:00 | QTDA |  |  | BBBG |
| 136 | 8.6 | **Hướng dẫn vận hành (HDVH)** |  | 1.25d? | 2013-08-23 08:00 A | 2013-08-26 10:00 |  | 37% | 0.79d? | 2012-04-30 13:20 | 2012-05-01 15:20 | 1.25d? | 3.75d |  |  |  | 12h | 3.65h |  |
| 137 | 8.6.1 | Tạo tài liệu HDVH |  | 8h? | 2013-08-23 08:00 A | 2013-08-23 17:00 |  | 46% | 4.35h? | 2012-04-30 13:20 | 2012-05-01 13:20 | 8h? | 3.75d | 0d | finish no earlier than 2010-02-01 08:00 | CBPT | 8h | 3.65h | HDVH |
| 138 | 8.6.2 | Xem xét HDVH |  | 2h? | 2013-08-26 08:00 | 2013-08-26 10:00 | 137 |  |  | 2012-05-01 13:20 | 2012-05-01 15:20 | 2h? | 3.75d | 0d | start no earlier than 2010-02-02 08:00 | QTDA; TNPT | 4h |  |  |
| 139 | 8.6.3 | Cập nhật các comment và phê duyệt HDVH | milestone | 0h? | 2013-08-26 10:00 | 2013-08-26 10:00 | 138 |  |  | 2012-05-01 15:20 | 2012-05-01 15:20 | 0h? | 3.75d |  | finish no earlier than 2010-02-02 08:00 | CBPT; QTDA |  |  |  |
| 140 | 8.7 | **Hướng dẫn khai thác (HDKT)** |  | 3d? | 2013-08-23 08:00 A | 2013-08-27 17:00 |  | 15% | 2.54d? | 2012-04-30 13:20 | 2012-05-03 13:20 | 3d? | 2d |  |  |  | 40h | 3.65h |  |
| 141 | 8.7.1 | Tạo tài liệu HDKT |  | 8h? | 2013-08-23 08:00 A | 2013-08-23 17:00 |  | 46% | 4.35h? | 2012-04-30 13:20 | 2012-05-01 13:20 | 8h? | 2d | 0d | start no earlier than 2010-02-02 08:00 | CBPT | 8h | 3.65h | HDKT |
| 142 | 8.7.2 | Xem xét HDKT |  | 8h? | 2013-08-26 08:00 | 2013-08-26 17:00 | 141 |  |  | 2012-05-01 13:20 | 2012-05-02 13:20 | 8h? | 2d | 0d | start no earlier than 2010-02-03 08:00 | QTDA; TNPT | 16h |  |  |
| 143 | 8.7.3 | Cập nhật các comment và phê duyệt HDKT |  | 8h? | 2013-08-27 08:00 | 2013-08-27 17:00 | 142 |  |  | 2012-05-02 13:20 | 2012-05-03 13:20 | 8h? | 2d |  | start no earlier than 2010-02-03 08:00 | CBPT; QTDA | 16h |  |  |
| 144 | 8.8 | **Đánh giá hệ thống** |  | 1d? | 2013-08-23 08:00 A | 2013-08-23 17:00 |  | 46% | 0.54d? | 2012-04-30 13:20 | 2012-05-01 13:20 | 1d? | 4d |  |  |  | 24h | 10.95h |  |
| 145 | 8.8.1 | Gửi phiếu yêu cầu đánh giá hệ thống sang TT CNTT |  | 1d? | 2013-08-23 08:00 A | 2013-08-23 17:00 |  | 46% | 0.54d? | 2012-04-30 13:20 | 2012-05-01 13:20 | 1d? | 4d |  |  | QTDA | 8h | 3.65h |  |
| 146 | 8.8.2 | Phối hợp đánh giá hệ thống cùng TT CNTT |  | 1d? | 2013-08-23 08:00 A | 2013-08-23 17:00 |  | 46% | 0.54d? | 2012-04-30 13:20 | 2012-05-01 13:20 | 1d? | 4d |  |  | CBPT | 8h | 3.65h |  |
| 147 | 8.8.3 | Sửa lỗi đánh giá (nếu có) |  | 1d? | 2013-08-23 08:00 A | 2013-08-23 17:00 |  | 46% | 0.54d? | 2012-04-30 13:20 | 2012-05-01 13:20 | 1d? | 4d |  |  | CBPT | 8h | 3.65h |  |
| 148 | 8.9 | **Kế hoạch chuyển giao hỗ trợ (KHCGHT)** |  | 0.5d? | 2013-08-23 08:00 A | 2013-08-23 12:00 |  | 91% | 0.04d? | 2012-04-30 13:20 | 2012-05-01 08:20 | 0.5d? | 0.25d | 0d |  |  | 4h | 3.65h |  |
| 149 | 8.9.1 | Phối hợp TTCNTT ký duyệt tài liệu KHCGHT |  | 4h? | 2013-08-23 08:00 A | 2013-08-23 12:00 |  | 91% | 0.35h? | 2012-04-30 13:20 | 2012-05-01 08:20 | 4h? | 0.25d |  | finish no earlier than 2010-02-15 08:00 | QTDA | 4h | 3.65h | KHCGHT |
| 150 | 8.10 | **Đào tạo và chuyển giao** |  | 3.5d? | 2013-08-23 13:00 | 2013-08-28 17:00 | 148 |  |  | 2012-05-01 08:20 | 2012-05-04 13:20 | 3.5d? | 0.25d | 0d |  |  | 56h |  |  |
| 151 | 8.10.1 | Bàn giao tài liệu cho TT khai thác CNTT |  | 1d? | 2013-08-23 13:00 | 2013-08-26 12:00 |  |  |  | 2012-05-01 08:20 | 2012-05-02 08:20 | 1d? | 2.75d |  | start no earlier than 2010-02-16 08:00 | QTDA | 8h |  | BBBG |
| 152 | 8.10.2 | Đào tạo HDCD |  | 4h? | 2013-08-23 13:00 | 2013-08-23 17:00 |  |  |  | 2012-05-01 08:20 | 2012-05-01 13:20 | 4h? | 3.25d |  | finish no earlier than 2010-02-18 17:30 | TNPT | 4h |  | BB đào tạo |
| 153 | 8.10.3 | Đào tạo HDVH |  | 1d? | 2013-08-23 13:00 | 2013-08-26 12:00 |  |  |  | 2012-05-01 08:20 | 2012-05-02 08:20 | 1d? | 2.75d |  | finish no earlier than 2010-02-18 17:30 | CBPT | 8h |  | BB đào tạo |
| 154 | 8.10.4 | Đào tạo HDKT |  | 1d? | 2013-08-23 13:00 | 2013-08-26 12:00 |  |  |  | 2012-05-01 08:20 | 2012-05-02 08:20 | 1d? | 2.75d |  | finish no earlier than 2010-02-18 17:30 | CBPT | 8h |  | BB đào tạo |
| 155 | 8.10.5 | Chuyển giao hệ thống cho TT khai thác CNTT |  | 28h? | 2013-08-23 13:00 | 2013-08-28 17:00 |  |  |  | 2012-05-01 08:20 | 2012-05-04 13:20 | 28h? | 0.25d |  | finish no earlier than 2010-02-23 17:30 | QTDA | 28h |  | BBCHHT |
| 156 | 9 | **Kết thúc** |  | 1d? | 2013-08-29 08:00 A | 2013-08-29 17:00 | 150 | 25% | 0.75d? |  | 2012-05-07 13:20 |  | 0d |  |  |  | 64h | 19.98h |  |
| 157 | 9.1 | Đánh giá dự án |  | 0.5d | 2013-08-29 08:00 A | 2013-08-29 12:00 |  | 33% | 0.33d | 2012-05-04 13:20 | 2012-05-07 08:20 | 0.5d | 0.5d |  |  | QTDA; CBGP; TNPT; CBKT; TNKT; TNGP; CBPT | 28h | 9.32h |  |
| 158 | 9.2 | Đánh giá nhân sự (với dự án kéo dài hơn 6 tháng thì đánh giá 6 tháng 1 lần) |  | 0.5d | 2013-08-29 08:00 A | 2013-08-29 12:00 |  | 33% | 0.33d | 2012-05-04 13:20 | 2012-05-07 08:20 | 0.5d | 0.5d |  |  | QTDA; CBGP; TNPT; CBKT; TNKT; TNGP; CBPT | 28h | 9.32h |  |
| 159 | 9.3 | Tạo báo cáo kết thúc dự án |  | 4h? | 2013-08-29 08:00 A | 2013-08-29 12:00 |  | 33% | 2.67h? | 2012-05-04 13:20 | 2012-05-07 08:20 | 4h? | 0d |  | finish no earlier than 2010-02-24 08:00 | QTDA | 4h | 1.33h | Báo cáo |
| 160 | 9.4 | Xem xét và họp kết thúc dự án | milestone | 0h? | 2013-08-29 12:00 | 2013-08-29 12:00 | 159 |  |  | 2012-05-07 08:20 | 2012-05-07 08:20 | 0h? | 0d |  | finish no earlier than 2010-02-24 08:00 | TNGP; TNKT; TNPT |  |  | BBH |
| 161 | 9.5 | Bàn giao cấu hình cho QA |  | 4h? | 2013-08-29 13:00 | 2013-08-29 17:00 | 160 |  |  | 2012-05-07 08:20 | 2012-05-07 13:20 | 4h? | 0d |  | start no earlier than 2010-02-24 08:00 | QLCH | 4h |  | BBBG |

| ID | WBS | Task | Duration | Start | Finish | Complete | Remaining | Baseline start | Baseline finish | Baseline duration | Total slack | Constraint | Resources | Work | Actual work |
| --- | --- | --- | --- | --- | --- | --- | --- | --- | --- | --- | --- | --- | --- | --- | --- |
| 162 | 10 | **Họp review code** | 85.25d | 2012-01-06 08:00 A | 2012-05-04 10:00 | 25% | 63.94d | 2012-01-06 08:00 | 2012-05-04 10:00 | 85.25d | 344.75d |  |  | 144h | 36h |
| 163 | 10.1 | Họp review code 1 | 0.25d | 2012-01-06 08:00 A | 2012-01-06 10:00 A | 100% |  | 2012-01-06 08:00 | 2012-01-06 10:00 | 0.25d |  | start no earlier than 2012-01-06 08:00 | TNPT; QTDA; CBPT1; CBPT2 | 8h | 8h |
| 164 | 10.2 | Họp review code 2 | 0.25d | 2012-01-13 08:00 A | 2012-01-13 10:00 A | 100% |  | 2012-01-13 08:00 | 2012-01-13 10:00 | 0.25d |  | start no earlier than 2012-01-13 08:00 | TNPT; QTDA; CBPT1; CBPT2 | 8h | 8h |
| 165 | 10.3 | Họp review code 3 | 0.25d | 2012-01-20 08:00 A | 2012-01-20 10:00 A | 100% |  | 2012-01-20 08:00 | 2012-01-20 10:00 | 0.25d |  | start no earlier than 2012-01-20 08:00 | TNPT; QTDA; CBPT1; CBPT2 | 8h | 8h |
| 166 | 10.4 | Họp review code 4 | 0.25d | 2012-01-27 08:00 A | 2012-01-27 10:00 A | 100% |  | 2012-01-27 08:00 | 2012-01-27 10:00 | 0.25d |  | start no earlier than 2012-01-27 08:00 | TNPT; QTDA; CBPT1; CBPT2 | 8h | 8h |
| 167 | 10.5 | Họp review code 5 | 0.25d | 2012-02-03 08:00 A | 2012-02-03 10:00 | 50% | 0.12d | 2012-02-03 08:00 | 2012-02-03 10:00 | 0.25d | 409.75d | start no earlier than 2012-02-03 08:00 | TNPT; QTDA; CBPT1; CBPT2 | 8h | 4h |
| 168 | 10.6 | Họp review code 6 | 0.25d | 2012-02-10 08:00 | 2012-02-10 10:00 |  |  | 2012-02-10 08:00 | 2012-02-10 10:00 | 0.25d | 404.75d | start no earlier than 2012-02-10 08:00 | TNPT; QTDA; CBPT1; CBPT2 | 8h |  |
| 169 | 10.7 | Họp review code 7 | 0.25d | 2012-02-17 08:00 | 2012-02-17 10:00 |  |  | 2012-02-17 08:00 | 2012-02-17 10:00 | 0.25d | 399.75d | start no earlier than 2012-02-17 08:00 | TNPT; QTDA; CBPT1; CBPT2 | 8h |  |
| 170 | 10.8 | Họp review code 8 | 0.25d | 2012-02-24 08:00 | 2012-02-24 10:00 |  |  | 2012-02-24 08:00 | 2012-02-24 10:00 | 0.25d | 394.75d | start no earlier than 2012-02-24 08:00 | TNPT; QTDA; CBPT1; CBPT2 | 8h |  |
| 171 | 10.9 | Họp review code 9 | 0.25d | 2012-03-02 08:00 | 2012-03-02 10:00 |  |  | 2012-03-02 08:00 | 2012-03-02 10:00 | 0.25d | 389.75d | start no earlier than 2012-03-02 08:00 | TNPT; QTDA; CBPT1; CBPT2 | 8h |  |
| 172 | 10.10 | Họp review code 10 | 0.25d | 2012-03-09 08:00 | 2012-03-09 10:00 |  |  | 2012-03-09 08:00 | 2012-03-09 10:00 | 0.25d | 384.75d | start no earlier than 2012-03-09 08:00 | TNPT; QTDA; CBPT1; CBPT2 | 8h |  |
| 173 | 10.11 | Họp review code 11 | 0.25d | 2012-03-16 08:00 | 2012-03-16 10:00 |  |  | 2012-03-16 08:00 | 2012-03-16 10:00 | 0.25d | 379.75d | start no earlier than 2012-03-16 08:00 | TNPT; QTDA; CBPT1; CBPT2 | 8h |  |
| 174 | 10.12 | Họp review code 12 | 0.25d | 2012-03-23 08:00 | 2012-03-23 10:00 |  |  | 2012-03-23 08:00 | 2012-03-23 10:00 | 0.25d | 374.75d | start no earlier than 2012-03-23 08:00 | TNPT; QTDA; CBPT1; CBPT2 | 8h |  |
| 175 | 10.13 | Họp review code 13 | 0.25d | 2012-03-30 08:00 | 2012-03-30 10:00 |  |  | 2012-03-30 08:00 | 2012-03-30 10:00 | 0.25d | 369.75d | start no earlier than 2012-03-30 08:00 | TNPT; QTDA; CBPT1; CBPT2 | 8h |  |
| 176 | 10.14 | Họp review code 14 | 0.25d | 2012-04-06 08:00 | 2012-04-06 10:00 |  |  | 2012-04-06 08:00 | 2012-04-06 10:00 | 0.25d | 364.75d | start no earlier than 2012-04-06 08:00 | TNPT; QTDA; CBPT1; CBPT2 | 8h |  |
| 177 | 10.15 | Họp review code 15 | 0.25d | 2012-04-13 08:00 | 2012-04-13 10:00 |  |  | 2012-04-13 08:00 | 2012-04-13 10:00 | 0.25d | 359.75d | start no earlier than 2012-04-13 08:00 | TNPT; QTDA; CBPT1; CBPT2 | 8h |  |
| 178 | 10.16 | Họp review code 16 | 0.25d | 2012-04-20 08:00 | 2012-04-20 10:00 |  |  | 2012-04-20 08:00 | 2012-04-20 10:00 | 0.25d | 354.75d | start no earlier than 2012-04-20 08:00 | TNPT; QTDA; CBPT1; CBPT2 | 8h |  |
| 179 | 10.17 | Họp review code 17 | 0.25d | 2012-04-27 08:00 | 2012-04-27 10:00 |  |  | 2012-04-27 08:00 | 2012-04-27 10:00 | 0.25d | 349.75d | start no earlier than 2012-04-27 08:00 | TNPT; QTDA; CBPT1; CBPT2 | 8h |  |
| 180 | 10.18 | Họp review code 18 | 0.25d | 2012-05-04 08:00 | 2012-05-04 10:00 |  |  | 2012-05-04 08:00 | 2012-05-04 10:00 | 0.25d | 344.75d | start no earlier than 2012-05-04 08:00 | TNPT; QTDA; CBPT1; CBPT2 | 8h |  |
| 181 | 11 | **Họp định kỳ dự án** | 60.25d | 2012-01-06 08:00 A | 2012-03-30 10:00 | 25% | 45.19d | 2012-01-06 08:00 | 2012-03-30 10:00 | 60.25d | 369.75d |  |  | 182h | 45.5h |
| 182 | 11.1 | Họp định kỳ dự án 1 | 0.25d | 2012-01-06 08:00 A | 2012-01-06 10:00 A | 100% |  | 2012-01-06 08:00 | 2012-01-06 10:00 | 0.25d |  | start no earlier than 2012-01-06 08:00 | QTDA; CBGP; TNPT; CBKT; TNKT; TNGP; CBPT | 14h | 14h |
| 183 | 11.2 | Họp định kỳ dự án 2 | 0.25d | 2012-01-13 08:00 A | 2012-01-13 10:00 A | 100% |  | 2012-01-13 08:00 | 2012-01-13 10:00 | 0.25d |  | start no earlier than 2012-01-13 08:00 | QTDA; CBGP; TNPT; CBKT; TNKT; TNGP; CBPT | 14h | 14h |
| 184 | 11.3 | Họp định kỳ dự án 3 | 0.25d | 2012-01-20 08:00 A | 2012-01-20 10:00 A | 100% |  | 2012-01-20 08:00 | 2012-01-20 10:00 | 0.25d |  | start no earlier than 2012-01-20 08:00 | QTDA; CBGP; TNPT; CBKT; TNKT; TNGP; CBPT | 14h | 14h |
| 185 | 11.4 | Họp định kỳ dự án 4 | 0.25d | 2012-01-27 08:00 A | 2012-01-27 10:00 | 25% | 0.19d | 2012-01-27 08:00 | 2012-01-27 10:00 | 0.25d | 414.75d | start no earlier than 2012-01-27 08:00 | QTDA; CBGP; TNPT; CBKT; TNKT; TNGP; CBPT | 14h | 3.5h |
| 186 | 11.5 | Họp định kỳ dự án 5 | 0.25d | 2012-02-03 08:00 | 2012-02-03 10:00 |  |  | 2012-02-03 08:00 | 2012-02-03 10:00 | 0.25d | 409.75d | start no earlier than 2012-02-03 08:00 | QTDA; CBGP; TNPT; CBKT; TNKT; TNGP; CBPT | 14h |  |
| 187 | 11.6 | Họp định kỳ dự án 6 | 0.25d | 2012-02-10 08:00 | 2012-02-10 10:00 |  |  | 2012-02-10 08:00 | 2012-02-10 10:00 | 0.25d | 404.75d | start no earlier than 2012-02-10 08:00 | QTDA; CBGP; TNPT; CBKT; TNKT; TNGP; CBPT | 14h |  |
| 188 | 11.7 | Họp định kỳ dự án 7 | 0.25d | 2012-02-17 08:00 | 2012-02-17 10:00 |  |  | 2012-02-17 08:00 | 2012-02-17 10:00 | 0.25d | 399.75d | start no earlier than 2012-02-17 08:00 | QTDA; CBGP; TNPT; CBKT; TNKT; TNGP; CBPT | 14h |  |
| 189 | 11.8 | Họp định kỳ dự án 8 | 0.25d | 2012-02-24 08:00 | 2012-02-24 10:00 |  |  | 2012-02-24 08:00 | 2012-02-24 10:00 | 0.25d | 394.75d | start no earlier than 2012-02-24 08:00 | QTDA; CBGP; TNPT; CBKT; TNKT; TNGP; CBPT | 14h |  |
| 190 | 11.9 | Họp định kỳ dự án 9 | 0.25d | 2012-03-02 08:00 | 2012-03-02 10:00 |  |  | 2012-03-02 08:00 | 2012-03-02 10:00 | 0.25d | 389.75d | start no earlier than 2012-03-02 08:00 | QTDA; CBGP; TNPT; CBKT; TNKT; TNGP; CBPT | 14h |  |
| 191 | 11.10 | Họp định kỳ dự án 10 | 0.25d | 2012-03-09 08:00 | 2012-03-09 10:00 |  |  | 2012-03-09 08:00 | 2012-03-09 10:00 | 0.25d | 384.75d | start no earlier than 2012-03-09 08:00 | QTDA; CBGP; TNPT; CBKT; TNKT; TNGP; CBPT | 14h |  |
| 192 | 11.11 | Họp định kỳ dự án 11 | 0.25d | 2012-03-16 08:00 | 2012-03-16 10:00 |  |  | 2012-03-16 08:00 | 2012-03-16 10:00 | 0.25d | 379.75d | start no earlier than 2012-03-16 08:00 | QTDA; CBGP; TNPT; CBKT; TNKT; TNGP; CBPT | 14h |  |
| 193 | 11.12 | Họp định kỳ dự án 12 | 0.25d | 2012-03-23 08:00 | 2012-03-23 10:00 |  |  | 2012-03-23 08:00 | 2012-03-23 10:00 | 0.25d | 374.75d | start no earlier than 2012-03-23 08:00 | QTDA; CBGP; TNPT; CBKT; TNKT; TNGP; CBPT | 14h |  |
| 194 | 11.13 | Họp định kỳ dự án 13 | 0.25d | 2012-03-30 08:00 | 2012-03-30 10:00 |  |  | 2012-03-30 08:00 | 2012-03-30 10:00 | 0.25d | 369.75d | start no earlier than 2012-03-30 08:00 | QTDA; CBGP; TNPT; CBKT; TNKT; TNGP; CBPT | 14h |  |

| ID | WBS | Task | Duration | Start | Finish | Complete | Remaining | Total slack | Constraint | Resources | Work | Actual work |
| --- | --- | --- | --- | --- | --- | --- | --- | --- | --- | --- | --- | --- |
| 195 | 12 | **Quản trị dự án (báo cáo, cập nhật KHCT)** | 90d | 2012-01-06 08:00 A | 2012-05-10 17:00 | 25% | 67.5d | 340d |  |  | 36h | 9h |
| 196 | 12.1 | Quản trị dự án 1 | 5d | 2012-01-06 08:00 A | 2012-01-12 17:00 A | 100% |  |  | start no earlier than 2012-01-06 08:00 | QTDA [5%] | 2h | 2h |
| 197 | 12.2 | Quản trị dự án 2 | 5d | 2012-01-13 08:00 A | 2012-01-19 17:00 A | 100% |  |  | start no earlier than 2012-01-13 08:00 | QTDA [5%] | 2h | 2h |
| 198 | 12.3 | Quản trị dự án 3 | 5d | 2012-01-20 08:00 A | 2012-01-26 17:00 A | 100% |  |  | start no earlier than 2012-01-20 08:00 | QTDA [5%] | 2h | 2h |
| 199 | 12.4 | Quản trị dự án 4 | 5d | 2012-01-27 08:00 A | 2012-02-02 17:00 A | 100% |  |  | start no earlier than 2012-01-27 08:00 | QTDA [5%] | 2h | 2h |
| 200 | 12.5 | Quản trị dự án 5 | 5d | 2012-02-03 08:00 A | 2012-02-09 17:00 | 50% | 2.5d | 405d | start no earlier than 2012-02-03 08:00 | QTDA [5%] | 2h | 1h |
| 201 | 12.6 | Quản trị dự án 6 | 5d | 2012-02-10 08:00 | 2012-02-16 17:00 |  |  | 400d | start no earlier than 2012-02-10 08:00 | QTDA [5%] | 2h |  |
| 202 | 12.7 | Quản trị dự án 7 | 5d | 2012-02-17 08:00 | 2012-02-23 17:00 |  |  | 395d | start no earlier than 2012-02-17 08:00 | QTDA [5%] | 2h |  |
| 203 | 12.8 | Quản trị dự án 8 | 5d | 2012-02-24 08:00 | 2012-03-01 17:00 |  |  | 390d | start no earlier than 2012-02-24 08:00 | QTDA [5%] | 2h |  |
| 204 | 12.9 | Quản trị dự án 9 | 5d | 2012-03-02 08:00 | 2012-03-08 17:00 |  |  | 385d | start no earlier than 2012-03-02 08:00 | QTDA [5%] | 2h |  |
| 205 | 12.10 | Quản trị dự án 10 | 5d | 2012-03-09 08:00 | 2012-03-15 17:00 |  |  | 380d | start no earlier than 2012-03-09 08:00 | QTDA [5%] | 2h |  |
| 206 | 12.11 | Quản trị dự án 11 | 5d | 2012-03-16 08:00 | 2012-03-22 17:00 |  |  | 375d | start no earlier than 2012-03-16 08:00 | QTDA [5%] | 2h |  |
| 207 | 12.12 | Quản trị dự án 12 | 5d | 2012-03-23 08:00 | 2012-03-29 17:00 |  |  | 370d | start no earlier than 2012-03-23 08:00 | QTDA [5%] | 2h |  |
| 208 | 12.13 | Quản trị dự án 13 | 5d | 2012-03-30 08:00 | 2012-04-05 17:00 |  |  | 365d | start no earlier than 2012-03-30 08:00 | QTDA [5%] | 2h |  |
| 209 | 12.14 | Quản trị dự án 14 | 5d | 2012-04-06 08:00 | 2012-04-12 17:00 |  |  | 360d | start no earlier than 2012-04-06 08:00 | QTDA [5%] | 2h |  |
| 210 | 12.15 | Quản trị dự án 15 | 5d | 2012-04-13 08:00 | 2012-04-19 17:00 |  |  | 355d | start no earlier than 2012-04-13 08:00 | QTDA [5%] | 2h |  |
| 211 | 12.16 | Quản trị dự án 16 | 5d | 2012-04-20 08:00 | 2012-04-26 17:00 |  |  | 350d | start no earlier than 2012-04-20 08:00 | QTDA [5%] | 2h |  |
| 212 | 12.17 | Quản trị dự án 17 | 5d | 2012-04-27 08:00 | 2012-05-03 17:00 |  |  | 345d | start no earlier than 2012-04-27 08:00 | QTDA [5%] | 2h |  |
| 213 | 12.18 | Quản trị dự án 18 | 5d | 2012-05-04 08:00 | 2012-05-10 17:00 |  |  | 340d | start no earlier than 2012-05-04 08:00 | QTDA [5%] | 2h |  |
| 214 | 13 | **Quản lý cấu hình** | 90d | 2012-01-06 08:00 A | 2012-05-10 17:00 | 25% | 67.5d | 340d |  |  | 36h | 9h |
| 215 | 13.1 | Quản lý cấu hình 1 | 5d | 2012-01-06 08:00 A | 2012-01-12 17:00 A | 100% |  |  | start no earlier than 2012-01-06 08:00 | QLCH [5%] | 2h | 2h |
| 216 | 13.2 | Quản lý cấu hình 2 | 5d | 2012-01-13 08:00 A | 2012-01-19 17:00 A | 100% |  |  | start no earlier than 2012-01-13 08:00 | QLCH [5%] | 2h | 2h |
| 217 | 13.3 | Quản lý cấu hình 3 | 5d | 2012-01-20 08:00 A | 2012-01-26 17:00 A | 100% |  |  | start no earlier than 2012-01-20 08:00 | QLCH [5%] | 2h | 2h |
| 218 | 13.4 | Quản lý cấu hình 4 | 5d | 2012-01-27 08:00 A | 2012-02-02 17:00 A | 100% |  |  | start no earlier than 2012-01-27 08:00 | QLCH [5%] | 2h | 2h |
| 219 | 13.5 | Quản lý cấu hình 5 | 5d | 2012-02-03 08:00 A | 2012-02-09 17:00 | 50% | 2.5d | 405d | start no earlier than 2012-02-03 08:00 | QLCH [5%] | 2h | 1h |
| 220 | 13.6 | Quản lý cấu hình 6 | 5d | 2012-02-10 08:00 | 2012-02-16 17:00 |  |  | 400d | start no earlier than 2012-02-10 08:00 | QLCH [5%] | 2h |  |
| 221 | 13.7 | Quản lý cấu hình 7 | 5d | 2012-02-17 08:00 | 2012-02-23 17:00 |  |  | 395d | start no earlier than 2012-02-17 08:00 | QLCH [5%] | 2h |  |
| 222 | 13.8 | Quản lý cấu hình 8 | 5d | 2012-02-24 08:00 | 2012-03-01 17:00 |  |  | 390d | start no earlier than 2012-02-24 08:00 | QLCH [5%] | 2h |  |
| 223 | 13.9 | Quản lý cấu hình 9 | 5d | 2012-03-02 08:00 | 2012-03-08 17:00 |  |  | 385d | start no earlier than 2012-03-02 08:00 | QLCH [5%] | 2h |  |
| 224 | 13.10 | Quản lý cấu hình 10 | 5d | 2012-03-09 08:00 | 2012-03-15 17:00 |  |  | 380d | start no earlier than 2012-03-09 08:00 | QLCH [5%] | 2h |  |
| 225 | 13.11 | Quản lý cấu hình 11 | 5d | 2012-03-16 08:00 | 2012-03-22 17:00 |  |  | 375d | start no earlier than 2012-03-16 08:00 | QLCH [5%] | 2h |  |
| 226 | 13.12 | Quản lý cấu hình 12 | 5d | 2012-03-23 08:00 | 2012-03-29 17:00 |  |  | 370d | start no earlier than 2012-03-23 08:00 | QLCH [5%] | 2h |  |
| 227 | 13.13 | Quản lý cấu hình 13 | 5d | 2012-03-30 08:00 | 2012-04-05 17:00 |  |  | 365d | start no earlier than 2012-03-30 08:00 | QLCH [5%] | 2h |  |
| 228 | 13.14 | Quản lý cấu hình 14 | 5d | 2012-04-06 08:00 | 2012-04-12 17:00 |  |  | 360d | start no earlier than 2012-04-06 08:00 | QLCH [5%] | 2h |  |
| 229 | 13.15 | Quản lý cấu hình 15 | 5d | 2012-04-13 08:00 | 2012-04-19 17:00 |  |  | 355d | start no earlier than 2012-04-13 08:00 | QLCH [5%] | 2h |  |
| 230 | 13.16 | Quản lý cấu hình 16 | 5d | 2012-04-20 08:00 | 2012-04-26 17:00 |  |  | 350d | start no earlier than 2012-04-20 08:00 | QLCH [5%] | 2h |  |
| 231 | 13.17 | Quản lý cấu hình 17 | 5d | 2012-04-27 08:00 | 2012-05-03 17:00 |  |  | 345d | start no earlier than 2012-04-27 08:00 | QLCH [5%] | 2h |  |
| 232 | 13.18 | Quản lý cấu hình 18 | 5d | 2012-05-04 08:00 | 2012-05-10 17:00 |  |  | 340d | start no earlier than 2012-05-04 08:00 | QLCH [5%] | 2h |  |
